# TPT

Schedule from MS Project, 2020-02-10 to 2021-01-19, status date 2020-05-07, costs in €, A marks actual dates.

## Calendars

- Estándar: Mon-Fri 09:00-13:00, 15:00-19:00; Sat-Sun off. Exceptions (off unless hours are given): 2020-03-11 to 2020-03-26 (obligado cierre por COVID-19), 2020-04-09 to 2020-04-12 (semana santa), 2020-07-27 to 2020-08-21 (verano), 2020-12-24 to 2021-01-06 (navidad).

## Resources

| Resource | Rate |
| --- | --- |
| Programador jefe | 13.5 |
| Jefe del proyecto | 15 |
| Encargado de pruebas 1 | 10 |
| Programador 2 | 12 |
| Programador 3 | 12 |
| Programador 4 | 12 |
| Encargado de pruebas 2 | 12 |

## Schedule

| ID | WBS | Task | Type | Duration | Start | Finish | Predecessors | Complete | Remaining | Baseline start | Baseline finish | Baseline duration | Total slack | Constraint | Deadline | Resources | Work | Actual work | Cost | Baseline cost | Actual cost |
| --- | --- | --- | --- | --- | --- | --- | --- | --- | --- | --- | --- | --- | --- | --- | --- | --- | --- | --- | --- | --- | --- |
| 1 | 1 | Estudio del sistema a desarrollar | manual | 15d | 2020-02-10 A | 2020-02-28 A |  | 100% |  | 2020-02-10 | 2020-02-28 | 15d |  |  |  | Jefe del proyecto; Programador jefe | 240h | 240h | 3,420 | 3,420 | 3,420 |
| 2 | 2 | Estudio del sistema completado | milestone, manual | 0d | 2020-03-02 A | 2020-03-02 A | 1 | 100% |  | 2020-03-02 | 2020-03-02 | 0d |  |  |  |  |  |  |  |  |  |
| 3 | 3 | **Requisitos** |  | 161d | 2020-03-02 A | 2020-11-27 | 1 | 83% | 26.83d | 2020-03-02 | 2020-11-27 | 161d |  |  |  |  | 1200h | 1000h | 15,480 | 15,480 | 12,900 |
| 4 | 3.1 | Definición de requisitos |  | 10d | 2020-03-02 A | 2020-03-31 A |  | 100% |  | 2020-03-02 | 2020-03-31 | 10d |  | finish no earlier than 2020-03-31 |  | Jefe del proyecto; Programador jefe; Programador 2; Programador 3; Programador 4 | 400h | 400h | 5,160 | 5,160 | 5,160 |
| 5 | 3.2 | Análisis de requisitos |  | 10d | 2020-04-01 A | 2020-04-16 A | 4 | 100% |  | 2020-04-01 | 2020-04-16 | 10d |  |  |  | Programador 2; Jefe del proyecto; Programador 3; Programador 4; Programador jefe | 400h | 400h | 5,160 | 5,160 | 5,160 |
| 6 | 3.3 | Especificación de requisitos |  | 10d | 2020-04-17 A | 2020-04-30 | 5 | 50% | 5d | 2020-04-17 | 2020-04-30 | 10d | 156d |  |  | Programador 2; Jefe del proyecto; Programador 3; Programador 4; Programador jefe | 400h | 200h | 5,160 | 5,160 | 2,580 |
| 7 | 4 | Estudio de requisitos completado | manual | 1d | 2020-05-01 | 2020-05-01 | 3 |  |  | 2020-05-01 | 2020-05-01 | 1d |  |  |  |  |  |  |  |  |  |
| 8 | 5 | **Diseño** |  | 15d | 2020-05-01 | 2020-05-21 |  |  |  | 2020-05-01 | 2020-05-21 | 15d |  |  |  |  | 920h |  | 11,868 | 11,868 |  |
| 9 | 5.1 | Diseño arquitectónico |  | 15d | 2020-05-01 | 2020-05-21 |  |  |  | 2020-05-01 | 2020-05-21 | 15d | 142d | start no earlier than 2020-05-01 |  | Jefe del proyecto; Programador 2; Programador 3; Programador 4; Programador jefe | 600h |  | 7,740 | 7,740 |  |
| 10 | 5.2 | Diseño interfaz |  | 8d | 2020-04-22 | 2020-05-01 |  |  |  | 2020-04-22 | 2020-05-01 | 8d | 156d | start no earlier than 2020-04-22 |  | Jefe del proyecto; Programador 2; Programador 3; Programador 4; Programador jefe | 320h |  | 4,128 | 4,128 |  |
| 11 | 6 | Diseño completado | milestone, manual | 0d | 2020-05-22 | 2020-05-22 | 8 |  |  | 2020-05-22 | 2020-05-22 | 0d |  |  |  |  |  |  |  |  |  |
| 12 | 7 | **Desarrollo** |  | 67d | 2020-05-22 | 2020-09-21 | 8 |  |  | 2020-05-22 | 2020-09-21 | 67d | 0d |  |  |  | 2680h |  | 34,572 | 34,572 |  |
| 13 | 7.1 | Codificación y depuración |  | 60d | 2020-05-22 | 2020-09-10 |  |  |  | 2020-05-22 | 2020-09-10 | 60d | 0d |  |  | Jefe del proyecto; Programador 2; Programador 3; Programador 4; Programador jefe | 2400h |  | 30,960 | 30,960 |  |
| 14 | 7.2 | Documentación |  | 7d | 2020-09-11 | 2020-09-21 | 13 |  |  | 2020-09-11 | 2020-09-21 | 7d | 0d |  |  | Jefe del proyecto; Programador 2; Programador 3; Programador 4; Programador jefe | 280h |  | 3,612 | 3,612 |  |
| 15 | 8 | Desarrollo completado | milestone, manual | 0d | 2020-09-22 | 2020-09-22 | 12 |  |  | 2020-09-22 | 2020-09-22 | 0d |  |  |  |  |  |  |  |  |  |
| 16 | 9 | **Pruebas** |  | 10d | 2020-09-22 | 2020-10-05 | 12 |  |  | 2020-09-22 | 2020-10-05 | 10d | 0d |  |  |  | 320h |  | 4,040 | 4,040 |  |
| 17 | 9.1 | Pruebas unitarias |  | 5d | 2020-09-22 | 2020-09-28 |  |  |  | 2020-09-22 | 2020-09-28 | 5d | 0d |  |  | Programador jefe; Jefe del proyecto; Encargado de pruebas 2; Encargado de pruebas 1 | 160h |  | 2,020 | 2,020 |  |
| 18 | 9.2 | Pruebas de integración |  | 5d | 2020-09-29 | 2020-10-05 | 17 |  |  | 2020-09-29 | 2020-10-05 | 5d | 0d |  |  | Programador jefe; Jefe del proyecto; Encargado de pruebas 2; Encargado de pruebas 1 | 160h |  | 2,020 | 2,020 |  |
| 19 | 10 | Pruebas completadas | milestone, manual | 0d | 2020-10-06 | 2020-10-06 | 16 |  |  | 2020-10-06 | 2020-10-06 | 0d |  |  |  |  |  |  |  |  |  |
| 20 | 11 | **Instalación del software** |  | 35d | 2020-10-06 | 2020-11-23 | 16 |  |  | 2020-10-06 | 2020-11-23 | 35d | 0d |  |  |  | 1960h |  | 24,220 | 24,220 |  |
| 21 | 11.1 | Evaluación |  | 14d | 2020-10-06 | 2020-10-23 |  |  |  | 2020-10-06 | 2020-10-23 | 14d | 0d |  |  | Encargado de pruebas 1; Encargado de pruebas 2; Jefe del proyecto; Programador 2; Programador 3; Programador 4; Programador jefe | 784h |  | 9,688 | 9,688 |  |
| 22 | 11.2 | Correción de errores |  | 7d | 2020-10-26 | 2020-11-03 | 21 |  |  | 2020-10-26 | 2020-11-03 | 7d | 0d |  |  | Encargado de pruebas 1; Encargado de pruebas 2; Jefe del proyecto; Programador 2; Programador 3; Programador 4; Programador jefe | 392h |  | 4,844 | 4,844 |  |
| 23 | 11.3 | Añadir mejoras |  | 14d | 2020-11-04 | 2020-11-23 | 22 |  |  | 2020-11-04 | 2020-11-23 | 14d | 0d |  |  | Encargado de pruebas 1; Encargado de pruebas 2; Jefe del proyecto; Programador 2; Programador 3; Programador 4; Programador jefe | 784h |  | 9,688 | 9,688 |  |
| 24 | 12 | Instalación completada | milestone, manual | 0d | 2020-11-24 | 2020-11-24 | 20 |  |  | 2020-11-24 | 2020-11-24 | 0d |  |  |  |  |  |  |  |  |  |
| 25 | 13 | Lanzamiento del sistema | manual | 30d? | 2020-11-24 | 2021-01-18 | 20 |  |  | 2020-11-24 | 2021-01-18 | 30d? |  |  | 2021-02-10 | Encargado de pruebas 1; Encargado de pruebas 2; Jefe del proyecto; Programador 3; Programador 2; Programador 4; Programador jefe | 1680h |  | 20,760 | 20,760 |  |
| 26 | 14 | Proyecto completado | milestone, manual | 0d | 2021-01-19 | 2021-01-19 | 25 |  |  | 2021-01-19 | 2021-01-19 | 0d |  |  |  |  |  |  |  |  |  |

| ID | WBS | Task | Type | Duration | Start | Finish | Complete | Remaining | Baseline start | Baseline finish | Baseline duration | Total slack | Constraint | Resources | Work | Actual work | Cost | Baseline cost | Actual cost |
| --- | --- | --- | --- | --- | --- | --- | --- | --- | --- | --- | --- | --- | --- | --- | --- | --- | --- | --- | --- |
| 27 | 15 | **Reunión semana** |  | 202d | 2020-02-10 A | 2021-01-18 | 12% | 177.76d | 2020-02-10 | 2021-01-18 | 202d | 0d |  |  | 651h | 42h | 8,044.5 | 8,044.5 | 519 |
| 28 | 15.1 | Reunión semana 1 |  | 1d | 2020-02-10 A | 2020-02-10 A | 100% |  | 2020-02-10 | 2020-02-10 | 1d |  | start no earlier than 2020-02-10 | Encargado de pruebas 1 [12.5%]; Encargado de pruebas 2 [12.5%]; Jefe del proyecto [12.5%]; Programador 2 [12.5%]; Programador 3 [12.5%]; Programador 4 [12.5%]; Programador jefe [12.5%] | 7h | 7h | 86.5 | 86.5 | 86.5 |
| 29 | 15.2 | Reunión semana 2 |  | 1d | 2020-02-17 A | 2020-02-17 A | 100% |  | 2020-02-17 | 2020-02-17 | 1d |  | start no earlier than 2020-02-17 | Encargado de pruebas 1 [12.5%]; Encargado de pruebas 2 [12.5%]; Jefe del proyecto [12.5%]; Programador 2 [12.5%]; Programador 3 [12.5%]; Programador 4 [12.5%]; Programador jefe [12.5%] | 7h | 7h | 86.5 | 86.5 | 86.5 |
| 30 | 15.3 | Reunión semana 3 |  | 1d | 2020-02-24 A | 2020-02-24 A | 100% |  | 2020-02-24 | 2020-02-24 | 1d |  | start no earlier than 2020-02-24 | Encargado de pruebas 1 [12.5%]; Encargado de pruebas 2 [12.5%]; Jefe del proyecto [12.5%]; Programador 2 [12.5%]; Programador 3 [12.5%]; Programador 4 [12.5%]; Programador jefe [12.5%] | 7h | 7h | 86.5 | 86.5 | 86.5 |
| 31 | 15.4 | Reunión semana 4 |  | 1d | 2020-03-02 A | 2020-03-02 A | 100% |  | 2020-03-02 | 2020-03-02 | 1d |  | start no earlier than 2020-03-02 | Encargado de pruebas 1 [12.5%]; Encargado de pruebas 2 [12.5%]; Jefe del proyecto [12.5%]; Programador 2 [12.5%]; Programador 3 [12.5%]; Programador 4 [12.5%]; Programador jefe [12.5%] | 7h | 7h | 86.5 | 86.5 | 86.5 |
| 32 | 15.5 | Reunión semana 5 |  | 1d | 2020-03-09 A | 2020-03-09 A | 100% |  | 2020-03-09 | 2020-03-09 | 1d |  | start no earlier than 2020-03-09 | Encargado de pruebas 1 [12.5%]; Encargado de pruebas 2 [12.5%]; Jefe del proyecto [12.5%]; Programador 2 [12.5%]; Programador 3 [12.5%]; Programador 4 [12.5%]; Programador jefe [12.5%] | 7h | 7h | 86.5 | 86.5 | 86.5 |
| 33 | 15.6 | Reunión semana 6 |  | 1d | 2020-02-10 A | 2020-02-10 A | 100% |  | 2020-02-10 | 2020-02-10 | 1d |  |  | Encargado de pruebas 1 [12.5%]; Encargado de pruebas 2 [12.5%]; Jefe del proyecto [12.5%]; Programador 2 [12.5%]; Programador 3 [12.5%]; Programador 4 [12.5%]; Programador jefe [12.5%] | 7h | 7h | 86.5 | 86.5 | 86.5 |
| 34 | 15.7 | Reunión semana 7 |  | 1d | 2020-03-27 | 2020-03-27 |  |  | 2020-03-27 | 2020-03-27 | 1d | 179d | start no earlier than 2020-03-23 | Encargado de pruebas 1 [12.5%]; Encargado de pruebas 2 [12.5%]; Jefe del proyecto [12.5%]; Programador 2 [12.5%]; Programador 3 [12.5%]; Programador 4 [12.5%]; Programador jefe [12.5%] | 7h |  | 86.5 | 86.5 |  |
| 35 | 15.8 | Reunión semana 8 |  | 1d | 2020-03-30 | 2020-03-30 |  |  | 2020-03-30 | 2020-03-30 | 1d | 178d | start no earlier than 2020-03-30 | Encargado de pruebas 1 [12.5%]; Encargado de pruebas 2 [12.5%]; Jefe del proyecto [12.5%]; Programador 2 [12.5%]; Programador 3 [12.5%]; Programador 4 [12.5%]; Programador jefe [12.5%] | 7h |  | 86.5 | 86.5 |  |
| 36 | 15.9 | Reunión semana 9 |  | 1d | 2020-04-06 | 2020-04-06 |  |  | 2020-04-06 | 2020-04-06 | 1d | 173d | start no earlier than 2020-04-06 | Encargado de pruebas 1 [12.5%]; Encargado de pruebas 2 [12.5%]; Jefe del proyecto [12.5%]; Programador 2 [12.5%]; Programador 3 [12.5%]; Programador 4 [12.5%]; Programador jefe [12.5%] | 7h |  | 86.5 | 86.5 |  |
| 37 | 15.10 | Reunión semana 10 |  | 1d | 2020-04-13 | 2020-04-13 |  |  | 2020-04-13 | 2020-04-13 | 1d | 170d | start no earlier than 2020-04-13 | Encargado de pruebas 1 [12.5%]; Encargado de pruebas 2 [12.5%]; Jefe del proyecto [12.5%]; Programador 2 [12.5%]; Programador 3 [12.5%]; Programador 4 [12.5%]; Programador jefe [12.5%] | 7h |  | 86.5 | 86.5 |  |
| 38 | 15.11 | Reunión semana 11 |  | 1d | 2020-04-20 | 2020-04-20 |  |  | 2020-04-20 | 2020-04-20 | 1d | 165d | start no earlier than 2020-04-20 | Encargado de pruebas 1 [12.5%]; Encargado de pruebas 2 [12.5%]; Jefe del proyecto [12.5%]; Programador 2 [12.5%]; Programador 3 [12.5%]; Programador 4 [12.5%]; Programador jefe [12.5%] | 7h |  | 86.5 | 86.5 |  |
| 39 | 15.12 | Reunión semana 12 |  | 1d | 2020-04-27 | 2020-04-27 |  |  | 2020-04-27 | 2020-04-27 | 1d | 160d | start no earlier than 2020-04-27 | Encargado de pruebas 1 [12.5%]; Encargado de pruebas 2 [12.5%]; Jefe del proyecto [12.5%]; Programador 2 [12.5%]; Programador 3 [12.5%]; Programador 4 [12.5%]; Programador jefe [12.5%] | 7h |  | 86.5 | 86.5 |  |
| 40 | 15.13 | Reunión semana 13 |  | 1d | 2020-05-04 | 2020-05-04 |  |  | 2020-05-04 | 2020-05-04 | 1d | 155d | start no earlier than 2020-05-04 | Encargado de pruebas 1 [12.5%]; Encargado de pruebas 2 [12.5%]; Jefe del proyecto [12.5%]; Programador 2 [12.5%]; Programador 3 [12.5%]; Programador 4 [12.5%]; Programador jefe [12.5%] | 7h |  | 86.5 | 86.5 |  |
| 41 | 15.14 | Reunión semana 14 |  | 1d | 2020-05-11 | 2020-05-11 |  |  | 2020-05-11 | 2020-05-11 | 1d | 150d | start no earlier than 2020-05-11 | Encargado de pruebas 1 [12.5%]; Encargado de pruebas 2 [12.5%]; Jefe del proyecto [12.5%]; Programador 2 [12.5%]; Programador 3 [12.5%]; Programador 4 [12.5%]; Programador jefe [12.5%] | 7h |  | 86.5 | 86.5 |  |
| 42 | 15.15 | Reunión semana 15 |  | 1d | 2020-05-18 | 2020-05-18 |  |  | 2020-05-18 | 2020-05-18 | 1d | 145d | start no earlier than 2020-05-18 | Encargado de pruebas 1 [12.5%]; Encargado de pruebas 2 [12.5%]; Jefe del proyecto [12.5%]; Programador 2 [12.5%]; Programador 3 [12.5%]; Programador 4 [12.5%]; Programador jefe [12.5%] | 7h |  | 86.5 | 86.5 |  |
| 43 | 15.16 | Reunión semana 16 |  | 1d | 2020-05-25 | 2020-05-25 |  |  | 2020-05-25 | 2020-05-25 | 1d | 140d | start no earlier than 2020-05-25 | Encargado de pruebas 1 [12.5%]; Encargado de pruebas 2 [12.5%]; Jefe del proyecto [12.5%]; Programador 2 [12.5%]; Programador 3 [12.5%]; Programador 4 [12.5%]; Programador jefe [12.5%] | 7h |  | 86.5 | 86.5 |  |
| 44 | 15.17 | Reunión semana 17 |  | 1d | 2020-06-01 | 2020-06-01 |  |  | 2020-06-01 | 2020-06-01 | 1d | 135d | start no earlier than 2020-06-01 | Encargado de pruebas 1 [12.5%]; Encargado de pruebas 2 [12.5%]; Jefe del proyecto [12.5%]; Programador 2 [12.5%]; Programador 3 [12.5%]; Programador 4 [12.5%]; Programador jefe [12.5%] | 7h |  | 86.5 | 86.5 |  |
| 45 | 15.18 | Reunión semana 18 |  | 1d | 2020-06-08 | 2020-06-08 |  |  | 2020-06-08 | 2020-06-08 | 1d | 130d | start no earlier than 2020-06-08 | Encargado de pruebas 1 [12.5%]; Encargado de pruebas 2 [12.5%]; Jefe del proyecto [12.5%]; Programador 2 [12.5%]; Programador 3 [12.5%]; Programador 4 [12.5%]; Programador jefe [12.5%] | 7h |  | 86.5 | 86.5 |  |
| 46 | 15.19 | Reunión semana 19 |  | 1d | 2020-06-15 | 2020-06-15 |  |  | 2020-06-15 | 2020-06-15 | 1d | 125d | start no earlier than 2020-06-15 | Encargado de pruebas 1 [12.5%]; Encargado de pruebas 2 [12.5%]; Jefe del proyecto [12.5%]; Programador 2 [12.5%]; Programador 3 [12.5%]; Programador 4 [12.5%]; Programador jefe [12.5%] | 7h |  | 86.5 | 86.5 |  |
| 47 | 15.20 | Reunión semana 20 |  | 1d | 2020-06-22 | 2020-06-22 |  |  | 2020-06-22 | 2020-06-22 | 1d | 120d | start no earlier than 2020-06-22 | Encargado de pruebas 1 [12.5%]; Encargado de pruebas 2 [12.5%]; Jefe del proyecto [12.5%]; Programador 2 [12.5%]; Programador 3 [12.5%]; Programador 4 [12.5%]; Programador jefe [12.5%] | 7h |  | 86.5 | 86.5 |  |
| 48 | 15.21 | Reunión semana 21 |  | 1d | 2020-06-29 | 2020-06-29 |  |  | 2020-06-29 | 2020-06-29 | 1d | 115d | start no earlier than 2020-06-29 | Encargado de pruebas 1 [12.5%]; Encargado de pruebas 2 [12.5%]; Jefe del proyecto [12.5%]; Programador 2 [12.5%]; Programador 3 [12.5%]; Programador 4 [12.5%]; Programador jefe [12.5%] | 7h |  | 86.5 | 86.5 |  |
| 49 | 15.22 | Reunión semana 22 |  | 1d | 2020-07-06 | 2020-07-06 |  |  | 2020-07-06 | 2020-07-06 | 1d | 110d | start no earlier than 2020-07-06 | Encargado de pruebas 1 [12.5%]; Encargado de pruebas 2 [12.5%]; Jefe del proyecto [12.5%]; Programador 2 [12.5%]; Programador 3 [12.5%]; Programador 4 [12.5%]; Programador jefe [12.5%] | 7h |  | 86.5 | 86.5 |  |
| 50 | 15.23 | Reunión semana 23 |  | 1d | 2020-07-13 | 2020-07-13 |  |  | 2020-07-13 | 2020-07-13 | 1d | 105d | start no earlier than 2020-07-13 | Encargado de pruebas 1 [12.5%]; Encargado de pruebas 2 [12.5%]; Jefe del proyecto [12.5%]; Programador 2 [12.5%]; Programador 3 [12.5%]; Programador 4 [12.5%]; Programador jefe [12.5%] | 7h |  | 86.5 | 86.5 |  |
| 51 | 15.24 | Reunión semana 24 |  | 1d | 2020-07-20 | 2020-07-20 |  |  | 2020-07-20 | 2020-07-20 | 1d | 100d | start no earlier than 2020-07-20 | Encargado de pruebas 1 [25%]; Encargado de pruebas 2 [25%]; Jefe del proyecto [25%]; Programador 2 [25%]; Programador 3 [25%]; Programador 4 [25%]; Programador jefe [25%] | 14h |  | 173 | 173 |  |
| 52 | 15.25 | Reunión semana 25 |  | 1d | 2020-08-24 | 2020-08-24 |  |  | 2020-08-24 | 2020-08-24 | 1d | 95d | start no earlier than 2020-07-27 | Encargado de pruebas 1 [12.5%]; Encargado de pruebas 2 [12.5%]; Jefe del proyecto [12.5%]; Programador 2 [12.5%]; Programador 3 [12.5%]; Programador 4 [12.5%]; Programador jefe [12.5%] | 7h |  | 86.5 | 86.5 |  |
| 53 | 15.26 | Reunión semana 26 |  | 1d | 2020-08-24 | 2020-08-24 |  |  | 2020-08-24 | 2020-08-24 | 1d | 95d | start no earlier than 2020-08-03 | Encargado de pruebas 1 [12.5%]; Encargado de pruebas 2 [12.5%]; Jefe del proyecto [12.5%]; Programador 2 [12.5%]; Programador 3 [12.5%]; Programador 4 [12.5%]; Programador jefe [12.5%] | 7h |  | 86.5 | 86.5 |  |
| 54 | 15.27 | Reunión semana 27 |  | 1d | 2020-08-24 | 2020-08-24 |  |  | 2020-08-24 | 2020-08-24 | 1d | 95d | start no earlier than 2020-08-10 | Encargado de pruebas 1 [12.5%]; Encargado de pruebas 2 [12.5%]; Jefe del proyecto [12.5%]; Programador 2 [12.5%]; Programador 3 [12.5%]; Programador 4 [12.5%]; Programador jefe [12.5%] | 7h |  | 86.5 | 86.5 |  |
| 55 | 15.28 | Reunión semana 28 |  | 1d | 2020-08-24 | 2020-08-24 |  |  | 2020-08-24 | 2020-08-24 | 1d | 95d | start no earlier than 2020-08-17 | Encargado de pruebas 1 [12.5%]; Encargado de pruebas 2 [12.5%]; Jefe del proyecto [12.5%]; Programador 2 [12.5%]; Programador 3 [12.5%]; Programador 4 [12.5%]; Programador jefe [12.5%] | 7h |  | 86.5 | 86.5 |  |
| 56 | 15.29 | Reunión semana 29 |  | 1d | 2020-08-24 | 2020-08-24 |  |  | 2020-08-24 | 2020-08-24 | 1d | 95d | start no earlier than 2020-08-24 | Encargado de pruebas 1 [12.5%]; Encargado de pruebas 2 [12.5%]; Jefe del proyecto [12.5%]; Programador 2 [12.5%]; Programador 3 [12.5%]; Programador 4 [12.5%]; Programador jefe [12.5%] | 7h |  | 86.5 | 86.5 |  |
| 57 | 15.30 | Reunión semana 30 |  | 1d | 2020-08-31 | 2020-08-31 |  |  | 2020-08-31 | 2020-08-31 | 1d | 90d | start no earlier than 2020-08-31 | Encargado de pruebas 1 [12.5%]; Encargado de pruebas 2 [12.5%]; Jefe del proyecto [12.5%]; Programador 2 [12.5%]; Programador 3 [12.5%]; Programador 4 [12.5%]; Programador jefe [12.5%] | 7h |  | 86.5 | 86.5 |  |
| 58 | 15.31 | Reunión semana 31 |  | 1d | 2020-09-07 | 2020-09-07 |  |  | 2020-09-07 | 2020-09-07 | 1d | 85d | start no earlier than 2020-09-07 | Encargado de pruebas 1 [12.5%]; Encargado de pruebas 2 [12.5%]; Jefe del proyecto [12.5%]; Programador 2 [12.5%]; Programador 3 [12.5%]; Programador 4 [12.5%]; Programador jefe [12.5%] | 7h |  | 86.5 | 86.5 |  |
| 59 | 15.32 | Reunión semana 32 |  | 1d | 2020-09-14 | 2020-09-14 |  |  | 2020-09-14 | 2020-09-14 | 1d | 80d | start no earlier than 2020-09-14 | Encargado de pruebas 1 [12.5%]; Encargado de pruebas 2 [12.5%]; Jefe del proyecto [12.5%]; Programador 2 [12.5%]; Programador 3 [12.5%]; Programador 4 [12.5%]; Programador jefe [12.5%] | 7h |  | 86.5 | 86.5 |  |
| 60 | 15.33 | Reunión semana 33 |  | 1d | 2020-09-21 | 2020-09-21 |  |  | 2020-09-21 | 2020-09-21 | 1d | 75d | start no earlier than 2020-09-21 | Encargado de pruebas 1 [12.5%]; Encargado de pruebas 2 [12.5%]; Jefe del proyecto [12.5%]; Programador 2 [12.5%]; Programador 3 [12.5%]; Programador 4 [12.5%]; Programador jefe [12.5%] | 7h |  | 86.5 | 86.5 |  |
| 61 | 15.34 | Reunión semana 34 |  | 1d | 2020-09-28 | 2020-09-28 |  |  | 2020-09-28 | 2020-09-28 | 1d | 70d | start no earlier than 2020-09-28 | Encargado de pruebas 1 [12.5%]; Encargado de pruebas 2 [12.5%]; Jefe del proyecto [12.5%]; Programador 2 [12.5%]; Programador 3 [12.5%]; Programador 4 [12.5%]; Programador jefe [12.5%] | 7h |  | 86.5 | 86.5 |  |
| 62 | 15.35 | Reunión semana 35 |  | 1d | 2020-10-05 | 2020-10-05 |  |  | 2020-10-05 | 2020-10-05 | 1d | 65d | start no earlier than 2020-10-05 | Encargado de pruebas 1 [12.5%]; Encargado de pruebas 2 [12.5%]; Jefe del proyecto [12.5%]; Programador 2 [12.5%]; Programador 3 [12.5%]; Programador 4 [12.5%]; Programador jefe [12.5%] | 7h |  | 86.5 | 86.5 |  |
| 63 | 15.36 | Reunión semana 36 |  | 1d | 2020-10-12 | 2020-10-12 |  |  | 2020-10-12 | 2020-10-12 | 1d | 60d | start no earlier than 2020-10-12 | Encargado de pruebas 1 [12.5%]; Encargado de pruebas 2 [12.5%]; Jefe del proyecto [12.5%]; Programador 2 [12.5%]; Programador 3 [12.5%]; Programador 4 [12.5%]; Programador jefe [12.5%] | 7h |  | 86.5 | 86.5 |  |
| 64 | 15.37 | Reunión semana 37 |  | 1d | 2020-10-19 | 2020-10-19 |  |  | 2020-10-19 | 2020-10-19 | 1d | 55d | start no earlier than 2020-10-19 | Encargado de pruebas 1 [12.5%]; Encargado de pruebas 2 [12.5%]; Jefe del proyecto [12.5%]; Programador 2 [12.5%]; Programador 3 [12.5%]; Programador 4 [12.5%]; Programador jefe [12.5%] | 7h |  | 86.5 | 86.5 |  |
| 65 | 15.38 | Reunión semana 38 |  | 1d | 2020-10-26 | 2020-10-26 |  |  | 2020-10-26 | 2020-10-26 | 1d | 50d | start no earlier than 2020-10-26 | Encargado de pruebas 1 [12.5%]; Encargado de pruebas 2 [12.5%]; Jefe del proyecto [12.5%]; Programador 2 [12.5%]; Programador 3 [12.5%]; Programador 4 [12.5%]; Programador jefe [12.5%] | 7h |  | 86.5 | 86.5 |  |
| 66 | 15.39 | Reunión semana 39 |  | 1d | 2020-11-02 | 2020-11-02 |  |  | 2020-11-02 | 2020-11-02 | 1d | 45d | start no earlier than 2020-11-02 | Encargado de pruebas 1 [12.5%]; Encargado de pruebas 2 [12.5%]; Jefe del proyecto [12.5%]; Programador 2 [12.5%]; Programador 3 [12.5%]; Programador 4 [12.5%]; Programador jefe [12.5%] | 7h |  | 86.5 | 86.5 |  |
| 67 | 15.40 | Reunión semana 40 |  | 1d | 2020-11-09 | 2020-11-09 |  |  | 2020-11-09 | 2020-11-09 | 1d | 40d | start no earlier than 2020-11-09 | Encargado de pruebas 1 [12.5%]; Encargado de pruebas 2 [12.5%]; Jefe del proyecto [12.5%]; Programador 2 [12.5%]; Programador 3 [12.5%]; Programador 4 [12.5%]; Programador jefe [12.5%] | 7h |  | 86.5 | 86.5 |  |
| 68 | 15.41 | Reunión semana 41 |  | 1d | 2020-11-16 | 2020-11-16 |  |  | 2020-11-16 | 2020-11-16 | 1d | 35d | start no earlier than 2020-11-16 | Encargado de pruebas 1 [12.5%]; Encargado de pruebas 2 [12.5%]; Jefe del proyecto [12.5%]; Programador 2 [12.5%]; Programador 3 [12.5%]; Programador 4 [12.5%]; Programador jefe [12.5%] | 7h |  | 86.5 | 86.5 |  |
| 69 | 15.42 | Reunión semana 42 |  | 1d | 2020-11-23 | 2020-11-23 |  |  | 2020-11-23 | 2020-11-23 | 1d | 30d | start no earlier than 2020-11-23 | Encargado de pruebas 1 [12.5%]; Encargado de pruebas 2 [12.5%]; Jefe del proyecto [12.5%]; Programador 2 [12.5%]; Programador 3 [12.5%]; Programador 4 [12.5%]; Programador jefe [12.5%] | 7h |  | 86.5 | 86.5 |  |
| 70 | 15.43 | Reunión semana 43 | manual | 1d | 2020-11-30 | 2020-11-30 |  |  | 2020-11-30 | 2020-11-30 | 1d |  | start no earlier than 2020-11-30 | Encargado de pruebas 1; Encargado de pruebas 2; Jefe del proyecto; Programador 2; Programador 3; Programador 4; Programador jefe | 7h |  | 86.5 | 86.5 |  |
| 71 | 15.44 | Reunión semana 44 | manual | 1d | 2020-12-07 | 2020-12-07 |  |  | 2020-12-07 | 2020-12-07 | 1d |  | start no earlier than 2020-12-07 | Encargado de pruebas 1; Encargado de pruebas 2; Jefe del proyecto; Programador 2; Programador 3; Programador 4; Programador jefe | 7h |  | 86.5 | 86.5 |  |
| 72 | 15.45 | Reunión semana 45 | manual | 1d | 2020-12-14 | 2020-12-14 |  |  | 2020-12-14 | 2020-12-14 | 1d |  | start no earlier than 2020-12-14 | Encargado de pruebas 1; Encargado de pruebas 2; Jefe del proyecto; Programador 2; Programador 3; Programador 4; Programador jefe | 56h |  | 692 | 692 |  |
| 73 | 15.46 | Reunión semana 46 | manual | 1d | 2020-12-21 | 2020-12-21 |  |  | 2020-12-21 | 2020-12-21 | 1d |  | start no earlier than 2020-12-21 | Encargado de pruebas 1; Encargado de pruebas 2; Jefe del proyecto; Programador 2; Programador 3; Programador 4; Programador jefe | 56h |  | 692 | 692 |  |
| 74 | 15.47 | Reunión semana 47 | manual | 1d | 2020-12-28 | 2020-12-28 |  |  | 2020-12-28 | 2020-12-28 | 1d |  | start no earlier than 2020-12-28 | Encargado de pruebas 1; Encargado de pruebas 2; Jefe del proyecto; Programador 2; Programador 3; Programador 4; Programador jefe | 56h |  | 692 | 692 |  |
| 75 | 15.48 | Reunión semana 48 | manual | 1d | 2021-01-04 | 2021-01-04 |  |  | 2021-01-04 | 2021-01-04 | 1d |  | start no earlier than 2021-01-04 | Encargado de pruebas 1; Encargado de pruebas 2; Jefe del proyecto; Programador 2; Programador 3; Programador 4; Programador jefe | 56h |  | 692 | 692 |  |
| 76 | 15.49 | Reunión semana 49 | manual | 1d | 2021-01-11 | 2021-01-11 |  |  | 2021-01-11 | 2021-01-11 | 1d |  | start no earlier than 2021-01-11 | Encargado de pruebas 1; Encargado de pruebas 2; Jefe del proyecto; Programador 2; Programador 3; Programador 4; Programador jefe | 56h |  | 692 | 692 |  |
| 77 | 15.50 | Reunión semana 50 | manual | 1d | 2021-01-18 | 2021-01-18 |  |  | 2021-01-18 | 2021-01-18 | 1d |  | start no earlier than 2021-01-18 | Encargado de pruebas 1; Encargado de pruebas 2; Jefe del proyecto; Programador 2; Programador 3; Programador 4; Programador jefe | 56h |  | 692 | 692 |  |
